# HardDex - Simplificando o hardware!

Schedule from GanttProject, 2025-03-10 to 2027-05-09, baseline: BL-PLAN (linha de base original: R2 27/06/2027, R3 07/12/2027).
IFSP Campus Bragança Paulista - ADS - Gestão de Projetos de Software (BRAGEPR)
Cronograma v2 do HardDex (corte 12/11/2026) com o cenário acelerado da CR-01 (venda de 20% das ações para contratar 2 devs). Linha de base BL-PLAN salva para comparar. Custos pelo valor-hora revisado por senioridade (coluna Custo) e pelo valor antigo de R$ 40/h (coluna Custo antigo). Taxas dos recursos em R$/hora.

## Calendars

- Project calendar: Mon-Sun working.

## Resources

| Resource | Group | Rate |
| --- | --- | --- |
| Mirela Andressa de Oliveira | Gerente do Projeto - GP (R$ 110/h) | 110 |
| Victor Lis Bronzo | Líder Técnico (Dev Full-Stack) - Sr (R$ 100/h) | 100 |
| Ana Tayná Reis Maciel | Back-End - Pl (R$ 70/h) | 70 |
| Mariana Mourão Sampaio | Banco de Dados e QA - Pl (R$ 70/h) | 70 |
| Yago Barbosa Dini | Front-End - Jr (R$ 45/h) | 45 |
| Dev Pleno contratado (full-stack) | Dev Full-Stack (contratado) - Pl (R$ 70/h) | 70 |
| Dev Júnior contratado (front-end) | Front-End (contratado) - Jr (R$ 45/h) | 45 |

## Schedule

| ID | WBS | Task | Type | Duration | Start | Finish | Complete | Baseline start | Baseline finish | Baseline duration | Resources | Cost | EAP | Horas planejadas | Custo antigo R$ 40/h | Horas agregadas (12/11/2026) | Custo (R$) |
| --- | --- | --- | --- | --- | --- | --- | --- | --- | --- | --- | --- | --- | --- | --- | --- | --- | --- |
| 1 | 1 | **1 Projeto HardDex** |  | 791d | 2025-03-10 | 2027-05-09 | 62% | 2025-03-10 | 2027-12-07 | 1003d |  | 193,286.52 | 1 | 2652 | 106080.00 | 1489 | 193286.52 |
| 2 | 1.1 | Início do projeto (kickoff S1) | milestone | 0d | 2025-03-10 | 2025-03-10 | 100% | 2025-03-10 | 2025-03-10 | 0d |  |  |  |  |  |  |  |
| 3 | 1.2 | **1.1 S1 2025/1 - Ideação** |  | 112d | 2025-03-10 | 2025-06-29 | 100% | 2025-03-10 | 2025-06-29 | 112d |  | 31,600 | 1.1 | 400 | 16000.00 | 400 | 31600.00 |
| 4 | 1.2.1 | Sprint 1 (Sp01) |  | 14d | 2025-03-10 | 2025-03-23 | 100% | 2025-03-10 | 2025-03-23 | 14d | Mirela Andressa de Oliveira [12.5%]; Victor Lis Bronzo [12.5%]; Ana Tayná Reis Maciel [12.5%]; Mariana Mourão Sampaio [12.5%]; Yago Barbosa Dini [12.5%] | 3,950 | 1.1.S1 | 50 | 2000.00 | 50 | 3950.00 |
| 5 | 1.2.2 | Sprint 2 (Sp02) |  | 14d | 2025-03-24 | 2025-04-06 | 100% | 2025-03-24 | 2025-04-06 | 14d | Mirela Andressa de Oliveira [12.5%]; Victor Lis Bronzo [12.5%]; Ana Tayná Reis Maciel [12.5%]; Mariana Mourão Sampaio [12.5%]; Yago Barbosa Dini [12.5%] | 3,950 | 1.1.S2 | 50 | 2000.00 | 50 | 3950.00 |
| 6 | 1.2.3 | Sprint 3 (Sp03) |  | 14d | 2025-04-07 | 2025-04-20 | 100% | 2025-04-07 | 2025-04-20 | 14d | Mirela Andressa de Oliveira [12.5%]; Victor Lis Bronzo [12.5%]; Ana Tayná Reis Maciel [12.5%]; Mariana Mourão Sampaio [12.5%]; Yago Barbosa Dini [12.5%] | 3,950 | 1.1.S3 | 50 | 2000.00 | 50 | 3950.00 |
| 7 | 1.2.4 | Sprint 4 (Sp04) |  | 14d | 2025-04-21 | 2025-05-04 | 100% | 2025-04-21 | 2025-05-04 | 14d | Mirela Andressa de Oliveira [12.5%]; Victor Lis Bronzo [12.5%]; Ana Tayná Reis Maciel [12.5%]; Mariana Mourão Sampaio [12.5%]; Yago Barbosa Dini [12.5%] | 3,950 | 1.1.S4 | 50 | 2000.00 | 50 | 3950.00 |
| 8 | 1.2.5 | Sprint 5 (Sp05) |  | 14d | 2025-05-05 | 2025-05-18 | 100% | 2025-05-05 | 2025-05-18 | 14d | Mirela Andressa de Oliveira [12.5%]; Victor Lis Bronzo [12.5%]; Ana Tayná Reis Maciel [12.5%]; Mariana Mourão Sampaio [12.5%]; Yago Barbosa Dini [12.5%] | 3,950 | 1.1.S5 | 50 | 2000.00 | 50 | 3950.00 |
| 9 | 1.2.6 | Sprint 6 (Sp06) |  | 14d | 2025-05-19 | 2025-06-01 | 100% | 2025-05-19 | 2025-06-01 | 14d | Mirela Andressa de Oliveira [12.5%]; Victor Lis Bronzo [12.5%]; Ana Tayná Reis Maciel [12.5%]; Mariana Mourão Sampaio [12.5%]; Yago Barbosa Dini [12.5%] | 3,950 | 1.1.S6 | 50 | 2000.00 | 50 | 3950.00 |
| 10 | 1.2.7 | Sprint 7 (Sp07) |  | 14d | 2025-06-02 | 2025-06-15 | 100% | 2025-06-02 | 2025-06-15 | 14d | Mirela Andressa de Oliveira [12.5%]; Victor Lis Bronzo [12.5%]; Ana Tayná Reis Maciel [12.5%]; Mariana Mourão Sampaio [12.5%]; Yago Barbosa Dini [12.5%] | 3,950 | 1.1.S7 | 50 | 2000.00 | 50 | 3950.00 |
| 11 | 1.2.8 | Sprint 8 (Sp08) |  | 14d | 2025-06-16 | 2025-06-29 | 100% | 2025-06-16 | 2025-06-29 | 14d | Mirela Andressa de Oliveira [12.5%]; Victor Lis Bronzo [12.5%]; Ana Tayná Reis Maciel [12.5%]; Mariana Mourão Sampaio [12.5%]; Yago Barbosa Dini [12.5%] | 3,950 | 1.1.S8 | 50 | 2000.00 | 50 | 3950.00 |
| 12 | 1.3 | **1.2 S2 2025/2 - Requisitos iniciais** |  | 112d | 2025-08-25 | 2025-12-14 | 100% | 2025-08-25 | 2025-12-14 | 112d |  | 31,600 | 1.2 | 400 | 16000.00 | 400 | 31600.00 |
| 13 | 1.3.1 | Sprint 1 (Sp09) |  | 14d | 2025-08-25 | 2025-09-07 | 100% | 2025-08-25 | 2025-09-07 | 14d | Mirela Andressa de Oliveira [12.5%]; Victor Lis Bronzo [12.5%]; Ana Tayná Reis Maciel [12.5%]; Mariana Mourão Sampaio [12.5%]; Yago Barbosa Dini [12.5%] | 3,950 | 1.2.S1 | 50 | 2000.00 | 50 | 3950.00 |
| 14 | 1.3.2 | Sprint 2 (Sp10) |  | 14d | 2025-09-08 | 2025-09-21 | 100% | 2025-09-08 | 2025-09-21 | 14d | Mirela Andressa de Oliveira [12.5%]; Victor Lis Bronzo [12.5%]; Ana Tayná Reis Maciel [12.5%]; Mariana Mourão Sampaio [12.5%]; Yago Barbosa Dini [12.5%] | 3,950 | 1.2.S2 | 50 | 2000.00 | 50 | 3950.00 |
| 15 | 1.3.3 | Sprint 3 (Sp11) |  | 14d | 2025-09-22 | 2025-10-05 | 100% | 2025-09-22 | 2025-10-05 | 14d | Mirela Andressa de Oliveira [12.5%]; Victor Lis Bronzo [12.5%]; Ana Tayná Reis Maciel [12.5%]; Mariana Mourão Sampaio [12.5%]; Yago Barbosa Dini [12.5%] | 3,950 | 1.2.S3 | 50 | 2000.00 | 50 | 3950.00 |
| 16 | 1.3.4 | Sprint 4 (Sp12) |  | 14d | 2025-10-06 | 2025-10-19 | 100% | 2025-10-06 | 2025-10-19 | 14d | Mirela Andressa de Oliveira [12.5%]; Victor Lis Bronzo [12.5%]; Ana Tayná Reis Maciel [12.5%]; Mariana Mourão Sampaio [12.5%]; Yago Barbosa Dini [12.5%] | 3,950 | 1.2.S4 | 50 | 2000.00 | 50 | 3950.00 |
| 17 | 1.3.5 | Sprint 5 (Sp13) |  | 14d | 2025-10-20 | 2025-11-02 | 100% | 2025-10-20 | 2025-11-02 | 14d | Mirela Andressa de Oliveira [12.5%]; Victor Lis Bronzo [12.5%]; Ana Tayná Reis Maciel [12.5%]; Mariana Mourão Sampaio [12.5%]; Yago Barbosa Dini [12.5%] | 3,950 | 1.2.S5 | 50 | 2000.00 | 50 | 3950.00 |
| 18 | 1.3.6 | Sprint 6 (Sp14) |  | 14d | 2025-11-03 | 2025-11-16 | 100% | 2025-11-03 | 2025-11-16 | 14d | Mirela Andressa de Oliveira [12.5%]; Victor Lis Bronzo [12.5%]; Ana Tayná Reis Maciel [12.5%]; Mariana Mourão Sampaio [12.5%]; Yago Barbosa Dini [12.5%] | 3,950 | 1.2.S6 | 50 | 2000.00 | 50 | 3950.00 |
| 19 | 1.3.7 | Sprint 7 (Sp15) |  | 14d | 2025-11-17 | 2025-11-30 | 100% | 2025-11-17 | 2025-11-30 | 14d | Mirela Andressa de Oliveira [12.5%]; Victor Lis Bronzo [12.5%]; Ana Tayná Reis Maciel [12.5%]; Mariana Mourão Sampaio [12.5%]; Yago Barbosa Dini [12.5%] | 3,950 | 1.2.S7 | 50 | 2000.00 | 50 | 3950.00 |
| 20 | 1.3.8 | Sprint 8 (Sp16) |  | 14d | 2025-12-01 | 2025-12-14 | 100% | 2025-12-01 | 2025-12-14 | 14d | Mirela Andressa de Oliveira [12.5%]; Victor Lis Bronzo [12.5%]; Ana Tayná Reis Maciel [12.5%]; Mariana Mourão Sampaio [12.5%]; Yago Barbosa Dini [12.5%] | 3,950 | 1.2.S8 | 50 | 2000.00 | 50 | 3950.00 |
| 21 | 1.4 | **1.3 S3 2026/1 - Análise e modelagem** |  | 112d | 2026-03-09 | 2026-06-28 | 100% | 2026-03-09 | 2026-06-28 | 112d |  | 31,600 | 1.3 | 400 | 16000.00 | 400 | 31600.00 |
| 22 | 1.4.1 | Sprint 1 (Sp17) |  | 14d | 2026-03-09 | 2026-03-22 | 100% | 2026-03-09 | 2026-03-22 | 14d | Mirela Andressa de Oliveira [12.5%]; Victor Lis Bronzo [12.5%]; Ana Tayná Reis Maciel [12.5%]; Mariana Mourão Sampaio [12.5%]; Yago Barbosa Dini [12.5%] | 3,950 | 1.3.S1 | 50 | 2000.00 | 50 | 3950.00 |
| 23 | 1.4.2 | Sprint 2 (Sp18) |  | 14d | 2026-03-23 | 2026-04-05 | 100% | 2026-03-23 | 2026-04-05 | 14d | Mirela Andressa de Oliveira [12.5%]; Victor Lis Bronzo [12.5%]; Ana Tayná Reis Maciel [12.5%]; Mariana Mourão Sampaio [12.5%]; Yago Barbosa Dini [12.5%] | 3,950 | 1.3.S2 | 50 | 2000.00 | 50 | 3950.00 |
| 24 | 1.4.3 | Sprint 3 (Sp19) |  | 14d | 2026-04-06 | 2026-04-19 | 100% | 2026-04-06 | 2026-04-19 | 14d | Mirela Andressa de Oliveira [12.5%]; Victor Lis Bronzo [12.5%]; Ana Tayná Reis Maciel [12.5%]; Mariana Mourão Sampaio [12.5%]; Yago Barbosa Dini [12.5%] | 3,950 | 1.3.S3 | 50 | 2000.00 | 50 | 3950.00 |
| 25 | 1.4.4 | Sprint 4 (Sp20) |  | 14d | 2026-04-20 | 2026-05-03 | 100% | 2026-04-20 | 2026-05-03 | 14d | Mirela Andressa de Oliveira [12.5%]; Victor Lis Bronzo [12.5%]; Ana Tayná Reis Maciel [12.5%]; Mariana Mourão Sampaio [12.5%]; Yago Barbosa Dini [12.5%] | 3,950 | 1.3.S4 | 50 | 2000.00 | 50 | 3950.00 |
| 26 | 1.4.5 | Sprint 5 (Sp21) |  | 14d | 2026-05-04 | 2026-05-17 | 100% | 2026-05-04 | 2026-05-17 | 14d | Mirela Andressa de Oliveira [12.5%]; Victor Lis Bronzo [12.5%]; Ana Tayná Reis Maciel [12.5%]; Mariana Mourão Sampaio [12.5%]; Yago Barbosa Dini [12.5%] | 3,950 | 1.3.S5 | 50 | 2000.00 | 50 | 3950.00 |
| 27 | 1.4.6 | Sprint 6 (Sp22) |  | 14d | 2026-05-18 | 2026-05-31 | 100% | 2026-05-18 | 2026-05-31 | 14d | Mirela Andressa de Oliveira [12.5%]; Victor Lis Bronzo [12.5%]; Ana Tayná Reis Maciel [12.5%]; Mariana Mourão Sampaio [12.5%]; Yago Barbosa Dini [12.5%] | 3,950 | 1.3.S6 | 50 | 2000.00 | 50 | 3950.00 |
| 28 | 1.4.7 | Sprint 7 (Sp23) |  | 14d | 2026-06-01 | 2026-06-14 | 100% | 2026-06-01 | 2026-06-14 | 14d | Mirela Andressa de Oliveira [12.5%]; Victor Lis Bronzo [12.5%]; Ana Tayná Reis Maciel [12.5%]; Mariana Mourão Sampaio [12.5%]; Yago Barbosa Dini [12.5%] | 3,950 | 1.3.S7 | 50 | 2000.00 | 50 | 3950.00 |
| 29 | 1.4.8 | Sprint 8 (Sp24) |  | 14d | 2026-06-15 | 2026-06-28 | 100% | 2026-06-15 | 2026-06-28 | 14d | Mirela Andressa de Oliveira [12.5%]; Victor Lis Bronzo [12.5%]; Ana Tayná Reis Maciel [12.5%]; Mariana Mourão Sampaio [12.5%]; Yago Barbosa Dini [12.5%] | 3,950 | 1.3.S8 | 50 | 2000.00 | 50 | 3950.00 |
| 30 | 1.4.9 | BL-REQ 1.0 - documento de análise e modelagem | milestone | 0d | 2026-06-28 | 2026-06-28 | 100% | 2026-06-28 | 2026-06-28 | 0d |  |  |  |  |  |  |  |

Notes:
- 1: Cenário acelerado (CR-01). Status em 12/11/2026: VERDE; VP = VA = CR = 1489 h = R$ 117,631.00; IDP = IDC = 1,00. / Valor-hora revisado por senioridade (média R$ 79.00/h). BAC base R$ 189,600.00; BAC do cenário acelerado R$ 193,286.52 (2,652 h). / Linha de base salva: BL-PLAN (datas originais de R2 27/06/2027 e R3 07/12/2027).
- 3: 400 h = R$ 31,600.00 pelo valor-hora revisado (antes: R$ 16,000.00).
- 4: 10/03/2025 a 23/03/2025; 50 h da equipe (5 pessoas x 5 h/semana x 2 semanas).
- 5: 24/03/2025 a 06/04/2025; 50 h da equipe (5 pessoas x 5 h/semana x 2 semanas).
- 6: 07/04/2025 a 20/04/2025; 50 h da equipe (5 pessoas x 5 h/semana x 2 semanas).
- 7: 21/04/2025 a 04/05/2025; 50 h da equipe (5 pessoas x 5 h/semana x 2 semanas).
- 8: 05/05/2025 a 18/05/2025; 50 h da equipe (5 pessoas x 5 h/semana x 2 semanas).
- 9: 19/05/2025 a 01/06/2025; 50 h da equipe (5 pessoas x 5 h/semana x 2 semanas).
- 10: 02/06/2025 a 15/06/2025; 50 h da equipe (5 pessoas x 5 h/semana x 2 semanas).
- 11: 16/06/2025 a 29/06/2025; 50 h da equipe (5 pessoas x 5 h/semana x 2 semanas).
- 12: 400 h = R$ 31,600.00 pelo valor-hora revisado (antes: R$ 16,000.00).
- 13: 25/08/2025 a 07/09/2025; 50 h da equipe (5 pessoas x 5 h/semana x 2 semanas).
- 14: 08/09/2025 a 21/09/2025; 50 h da equipe (5 pessoas x 5 h/semana x 2 semanas).
- 15: 22/09/2025 a 05/10/2025; 50 h da equipe (5 pessoas x 5 h/semana x 2 semanas).
- 16: 06/10/2025 a 19/10/2025; 50 h da equipe (5 pessoas x 5 h/semana x 2 semanas).
- 17: 20/10/2025 a 02/11/2025; 50 h da equipe (5 pessoas x 5 h/semana x 2 semanas).
- 18: 03/11/2025 a 16/11/2025; 50 h da equipe (5 pessoas x 5 h/semana x 2 semanas).
- 19: 17/11/2025 a 30/11/2025; 50 h da equipe (5 pessoas x 5 h/semana x 2 semanas).
- 20: 01/12/2025 a 14/12/2025; 50 h da equipe (5 pessoas x 5 h/semana x 2 semanas).
- 21: 400 h = R$ 31,600.00 pelo valor-hora revisado (antes: R$ 16,000.00).
- 22: 09/03/2026 a 22/03/2026; 50 h da equipe (5 pessoas x 5 h/semana x 2 semanas).
- 23: 23/03/2026 a 05/04/2026; 50 h da equipe (5 pessoas x 5 h/semana x 2 semanas).
- 24: 06/04/2026 a 19/04/2026; 50 h da equipe (5 pessoas x 5 h/semana x 2 semanas).
- 25: 20/04/2026 a 03/05/2026; 50 h da equipe (5 pessoas x 5 h/semana x 2 semanas).
- 26: 04/05/2026 a 17/05/2026; 50 h da equipe (5 pessoas x 5 h/semana x 2 semanas).
- 27: 18/05/2026 a 31/05/2026; 50 h da equipe (5 pessoas x 5 h/semana x 2 semanas).
- 28: 01/06/2026 a 14/06/2026; 50 h da equipe (5 pessoas x 5 h/semana x 2 semanas).
- 29: 15/06/2026 a 28/06/2026; 50 h da equipe (5 pessoas x 5 h/semana x 2 semanas).

| ID | WBS | Task | Type | Duration | Start | Finish | Complete | Baseline start | Baseline finish | Baseline duration | Resources | Cost | EAP | Horas planejadas | Custo antigo R$ 40/h | Horas agregadas (12/11/2026) | Custo (R$) |
| --- | --- | --- | --- | --- | --- | --- | --- | --- | --- | --- | --- | --- | --- | --- | --- | --- | --- |
| 31 | 1.5 | **1.4 S4 2026/2 - Arquitetura, back-end base, catálogo (R1)** |  | 113d | 2026-08-17 | 2026-12-07 | 72% | 2026-08-17 | 2026-12-07 | 113d |  | 31,600 | 1.4 | 400 | 16000.00 | 289 | 31600.00 |
| 32 | 1.5.1 | Sprint 1 (Sp25) |  | 21d | 2026-08-17 | 2026-09-06 | 100% | 2026-08-17 | 2026-09-06 | 21d | Mirela Andressa de Oliveira [12.5%]; Victor Lis Bronzo [12.5%]; Ana Tayná Reis Maciel [12.5%]; Mariana Mourão Sampaio [12.5%]; Yago Barbosa Dini [12.5%] | 3,950 | 1.4.S1 | 50 | 2000.00 | 50 | 3950.00 |
| 33 | 1.5.2 | Sprint 2 (Sp26) |  | 14d | 2026-09-07 | 2026-09-20 | 100% | 2026-09-07 | 2026-09-20 | 14d | Mirela Andressa de Oliveira [12.5%]; Victor Lis Bronzo [12.5%]; Ana Tayná Reis Maciel [12.5%]; Mariana Mourão Sampaio [12.5%]; Yago Barbosa Dini [12.5%] | 3,950 | 1.4.S2 | 50 | 2000.00 | 50 | 3950.00 |
| 34 | 1.5.3 | Sprint 3 (Sp27) |  | 14d | 2026-09-21 | 2026-10-04 | 100% | 2026-09-21 | 2026-10-04 | 14d | Mirela Andressa de Oliveira [12.5%]; Victor Lis Bronzo [12.5%]; Ana Tayná Reis Maciel [12.5%]; Mariana Mourão Sampaio [12.5%]; Yago Barbosa Dini [12.5%] | 3,950 | 1.4.S3 | 50 | 2000.00 | 50 | 3950.00 |
| 35 | 1.5.4 | Sprint 4 (Sp28) |  | 14d | 2026-10-05 | 2026-10-18 | 100% | 2026-10-05 | 2026-10-18 | 14d | Mirela Andressa de Oliveira [12.5%]; Victor Lis Bronzo [12.5%]; Ana Tayná Reis Maciel [12.5%]; Mariana Mourão Sampaio [12.5%]; Yago Barbosa Dini [12.5%] | 3,950 | 1.4.S4 | 50 | 2000.00 | 50 | 3950.00 |
| 36 | 1.5.5 | Sprint 5 (Sp29) |  | 14d | 2026-10-19 | 2026-11-01 | 100% | 2026-10-19 | 2026-11-01 | 14d | Mirela Andressa de Oliveira [12.5%]; Victor Lis Bronzo [12.5%]; Ana Tayná Reis Maciel [12.5%]; Mariana Mourão Sampaio [12.5%]; Yago Barbosa Dini [12.5%] | 3,950 | 1.4.S5 | 50 | 2000.00 | 50 | 3950.00 |
| 37 | 1.5.6 | Sprint 6 (Sp30) |  | 14d | 2026-11-02 | 2026-11-15 | 78% | 2026-11-02 | 2026-11-15 | 14d | Mirela Andressa de Oliveira [12.5%]; Victor Lis Bronzo [12.5%]; Ana Tayná Reis Maciel [12.5%]; Mariana Mourão Sampaio [12.5%]; Yago Barbosa Dini [12.5%] | 3,950 | 1.4.S6 | 50 | 2000.00 | 39 | 3950.00 |
| 38 | 1.5.7 | Sprint 7 (Sp31) |  | 14d | 2026-11-16 | 2026-11-29 |  | 2026-11-16 | 2026-11-29 | 14d | Mirela Andressa de Oliveira [12.5%]; Victor Lis Bronzo [12.5%]; Ana Tayná Reis Maciel [12.5%]; Mariana Mourão Sampaio [12.5%]; Yago Barbosa Dini [12.5%] | 3,950 | 1.4.S7 | 50 | 2000.00 | 0 | 3950.00 |
| 39 | 1.5.8 | Sprint 8 (Sp32) |  | 7d | 2026-11-30 | 2026-12-06 |  | 2026-11-30 | 2026-12-06 | 7d | Mirela Andressa de Oliveira [12.5%]; Victor Lis Bronzo [12.5%]; Ana Tayná Reis Maciel [12.5%]; Mariana Mourão Sampaio [12.5%]; Yago Barbosa Dini [12.5%] | 3,950 | 1.4.S8 | 50 | 2000.00 | 0 | 3950.00 |
| 40 | 1.5.9 | Kickoff do S4 / BL-PLAN-S4 | milestone | 0d | 2026-08-17 | 2026-08-17 | 100% | 2026-08-17 | 2026-08-17 | 0d |  |  |  |  |  |  |  |
| 41 | 1.5.10 | BL-ARQ 1.0 (v0.3.0) | milestone | 0d | 2026-10-02 | 2026-10-02 | 100% | 2026-10-02 | 2026-10-02 | 0d |  |  |  |  |  |  |  |
| 42 | 1.5.11 | Status report RS-HDX-2026-10 (corte 12/10) | milestone | 0d | 2026-10-12 | 2026-10-12 | 100% | 2026-10-12 | 2026-10-12 | 0d |  |  |  |  |  |  |  |
| 43 | 1.5.12 | Status report RS-HDX-2026-11 (corte 12/11) e reunião dos GPs | milestone | 0d | 2026-11-12 | 2026-11-12 | 100% | 2026-11-12 | 2026-11-12 | 0d |  |  |  |  |  |  |  |
| 44 | 1.5.13 | Beta do R1 (v1.0.0-beta.1) | milestone | 0d | 2026-11-27 | 2026-11-27 |  | 2026-11-27 | 2026-11-27 | 0d |  |  |  |  |  |  |  |
| 45 | 1.5.14 | Release candidate do R1 (v1.0.0-rc.1) | milestone | 0d | 2026-11-30 | 2026-11-30 |  | 2026-11-30 | 2026-11-30 | 0d |  |  |  |  |  |  |  |
| 46 | 1.5.15 | Release R1 (v1.0.0) / BL-R1 | milestone | 0d | 2026-12-06 | 2026-12-06 |  | 2026-12-06 | 2026-12-06 | 0d |  |  |  |  |  |  |  |
| 47 | 1.5.16 | Entrega do Status Report na disciplina | milestone | 0d | 2026-12-07 | 2026-12-07 |  | 2026-12-07 | 2026-12-07 | 0d |  |  |  |  |  |  |  |
| 48 | 1.6 | **CR-01 Proposta de investimento (venda de 20% das ações)** |  | 25d | 2026-11-13 | 2026-12-07 |  | 2026-11-13 | 2026-12-07 | 25d |  |  | CR-01 |  |  |  |  |
| 49 | 1.6.1 | Submissão da proposta ao stakeholder | milestone | 0d | 2026-11-13 | 2026-11-13 |  | 2026-11-13 | 2026-11-13 | 0d |  |  |  |  |  |  |  |
| 50 | 1.6.2 | Análise e decisão do stakeholder |  | 12d | 2026-11-16 | 2026-11-27 |  | 2026-11-16 | 2026-11-27 | 12d |  |  |  |  |  |  |  |
| 51 | 1.6.3 | Recrutamento dos 2 devs (Pl e Jr) |  | 14d | 2026-11-23 | 2026-12-06 |  | 2026-11-23 | 2026-12-06 | 14d |  |  |  |  |  |  |  |
| 52 | 1.6.4 | Aporte parcela 1 (R$ 30,000) | milestone | 0d | 2026-12-07 | 2026-12-07 |  | 2026-12-07 | 2026-12-07 | 0d |  |  |  |  |  |  |  |
| 53 | 1.7 | Onboarding dos contratados (rampa 50% -> 75% -> 90%) |  | 42d | 2026-12-07 | 2027-01-17 |  | 2026-12-07 | 2027-01-17 | 42d | Dev Pleno contratado (full-stack) [50%]; Dev Júnior contratado (front-end) [50%] |  | CR-01.1 |  |  |  |  |
| 54 | 1.8 | **1.5 Release R2 acelerada (v1.1.0)** |  | 105d | 2026-12-07 | 2027-03-21 |  | 2027-03-08 | 2027-06-27 | 112d |  | 33,443.26 | 1.5 | 400 | 16000.00 |  | 33443.26 |
| 55 | 1.8.1 | 1.5.1 Gerenciamento (sprints, status, riscos) |  | 105d | 2026-12-07 | 2027-03-21 |  | 2027-03-08 | 2027-06-27 | 112d | Mirela Andressa de Oliveira [12.5%]; Victor Lis Bronzo [12.5%]; Ana Tayná Reis Maciel [12.5%]; Mariana Mourão Sampaio [12.5%]; Yago Barbosa Dini [12.5%] | 3,344.33 | 1.5.1 | 40 | 1600.00 |  | 3344.33 |
| 56 | 1.8.2 | 1.5.2 Questionário TDU e perfilamento (RF-004, RGN-01) |  | 21d | 2027-01-04 | 2027-01-24 |  | 2027-03-15 | 2027-04-04 | 21d | Mirela Andressa de Oliveira [12.5%]; Victor Lis Bronzo [12.5%]; Ana Tayná Reis Maciel [12.5%]; Mariana Mourão Sampaio [12.5%]; Yago Barbosa Dini [12.5%]; Dev Pleno contratado (full-stack) [50%]; Dev Júnior contratado (front-end) [50%] | 5,016.49 | 1.5.2 | 60 | 2400.00 |  | 5016.49 |
| 57 | 1.8.3 | 1.5.3 Busca em linguagem simples (RF-005) |  | 21d | 2027-01-18 | 2027-02-07 |  | 2027-04-05 | 2027-05-02 | 28d | Mirela Andressa de Oliveira [12.5%]; Victor Lis Bronzo [12.5%]; Ana Tayná Reis Maciel [12.5%]; Mariana Mourão Sampaio [12.5%]; Yago Barbosa Dini [12.5%]; Dev Pleno contratado (full-stack) [50%]; Dev Júnior contratado (front-end) [50%] | 6,688.65 | 1.5.3 | 80 | 3200.00 |  | 6688.65 |
| 58 | 1.8.4 | 1.5.4 Tags baseadas no perfil (RF-006) |  | 21d | 2027-02-01 | 2027-02-21 |  | 2027-04-26 | 2027-05-09 | 14d | Mirela Andressa de Oliveira [12.5%]; Victor Lis Bronzo [12.5%]; Ana Tayná Reis Maciel [12.5%]; Mariana Mourão Sampaio [12.5%]; Yago Barbosa Dini [12.5%]; Dev Pleno contratado (full-stack) [50%]; Dev Júnior contratado (front-end) [50%] | 3,344.33 | 1.5.4 | 40 | 1600.00 |  | 3344.33 |
| 59 | 1.8.5 | 1.5.5 Comparador de até 4 dispositivos (RF-007) |  | 14d | 2027-02-15 | 2027-02-28 |  | 2027-05-03 | 2027-05-30 | 28d | Mirela Andressa de Oliveira [12.5%]; Victor Lis Bronzo [12.5%]; Ana Tayná Reis Maciel [12.5%]; Mariana Mourão Sampaio [12.5%]; Yago Barbosa Dini [12.5%]; Dev Pleno contratado (full-stack) [50%]; Dev Júnior contratado (front-end) [50%] | 5,016.49 | 1.5.5 | 60 | 2400.00 |  | 5016.49 |
| 60 | 1.8.6 | 1.5.6 Dicionário didático na interface com WCAG nos modais (RF-008) |  | 21d | 2027-02-22 | 2027-03-14 |  | 2027-05-24 | 2027-06-06 | 14d | Mirela Andressa de Oliveira [12.5%]; Victor Lis Bronzo [12.5%]; Ana Tayná Reis Maciel [12.5%]; Mariana Mourão Sampaio [12.5%]; Yago Barbosa Dini [12.5%]; Dev Pleno contratado (full-stack) [50%]; Dev Júnior contratado (front-end) [50%] | 3,344.33 | 1.5.6 | 40 | 1600.00 |  | 3344.33 |
| 61 | 1.8.7 | 1.5.7 Componentes e redirecionamento com afiliado (RGN-03) |  | 7d | 2027-03-08 | 2027-03-14 |  | 2027-05-31 | 2027-06-13 | 14d | Mirela Andressa de Oliveira [12.5%]; Victor Lis Bronzo [12.5%]; Ana Tayná Reis Maciel [12.5%]; Mariana Mourão Sampaio [12.5%]; Yago Barbosa Dini [12.5%]; Dev Pleno contratado (full-stack) [50%]; Dev Júnior contratado (front-end) [50%] | 2,508.24 | 1.5.7 | 30 | 1200.00 |  | 2508.24 |
| 62 | 1.8.8 | 1.5.8 Integração, testes e release R2 |  | 14d | 2027-03-08 | 2027-03-21 |  | 2027-06-14 | 2027-06-27 | 14d | Mirela Andressa de Oliveira [12.5%]; Victor Lis Bronzo [12.5%]; Ana Tayná Reis Maciel [12.5%]; Mariana Mourão Sampaio [12.5%]; Yago Barbosa Dini [12.5%]; Dev Pleno contratado (full-stack) [50%]; Dev Júnior contratado (front-end) [50%] | 4,180.41 | 1.5.8 | 50 | 2000.00 |  | 4180.41 |
| 63 | 1.8.9 | Release R2 (v1.1.0) / BL-R2 | milestone | 0d | 2027-03-21 | 2027-03-21 |  | 2027-06-27 | 2027-06-27 | 0d |  |  |  |  |  |  |  |
| 64 | 1.8.10 | Aporte parcela 2 (R$ 30,000) | milestone | 0d | 2027-03-21 | 2027-03-21 |  | 2027-03-21 | 2027-03-21 | 0d |  |  |  |  |  |  |  |

Notes:
- 31: 289 de 400 h em 12/11/2026 (72,25%). R1 não é acelerável: faltam 3 semanas e incluir gente agora atrasaria (Lei de Brooks).
- 32: 17/08/2026 a 06/09/2026; 50 h da equipe (5 pessoas x 5 h/semana x 2 semanas).
- 33: 07/09/2026 a 20/09/2026; 50 h da equipe (5 pessoas x 5 h/semana x 2 semanas).
- 34: 21/09/2026 a 04/10/2026; 50 h da equipe (5 pessoas x 5 h/semana x 2 semanas).
- 35: 05/10/2026 a 18/10/2026; 50 h da equipe (5 pessoas x 5 h/semana x 2 semanas).
- 36: 19/10/2026 a 01/11/2026; 50 h da equipe (5 pessoas x 5 h/semana x 2 semanas).
- 37: 02/11/2026 a 15/11/2026; 50 h da equipe (5 pessoas x 5 h/semana x 2 semanas).
- 38: 16/11/2026 a 29/11/2026; 50 h da equipe (5 pessoas x 5 h/semana x 2 semanas).
- 39: 30/11/2026 a 06/12/2026; 50 h da equipe (5 pessoas x 5 h/semana x 2 semanas).
- 48: Captação de R$ 60,000.00 por 20% (pré-money R$ 240,000.00). Recursos só para contratar 2 devs e infra; liberados em 2 parcelas condicionadas a marcos.
- 53: Recesso 21/12/2026 a 03/01/2027 sem trabalho. Victor dedica 2 h/semana a revisão e mentoria enquanto houver contratados.
- 56: Linha de base: 15/03/2027 a 04/04/2027. Acelerado: 04/01/2027 a 24/01/2027.
- 57: Linha de base: 05/04/2027 a 02/05/2027. Acelerado: 18/01/2027 a 07/02/2027.
- 58: Linha de base: 26/04/2027 a 09/05/2027. Acelerado: 01/02/2027 a 21/02/2027.
- 59: Linha de base: 03/05/2027 a 30/05/2027. Acelerado: 15/02/2027 a 28/02/2027.
- 60: Linha de base: 24/05/2027 a 06/06/2027. Acelerado: 22/02/2027 a 14/03/2027.
- 61: Linha de base: 31/05/2027 a 13/06/2027. Acelerado: 08/03/2027 a 14/03/2027.
- 62: Linha de base: 14/06/2027 a 27/06/2027. Acelerado: 08/03/2027 a 21/03/2027.
- 63: Linha de base 27/06/2027; acelerado 21/03/2027.

| ID | WBS | Task | Type | Duration | Start | Finish | Baseline start | Baseline finish | Baseline duration | Resources | Cost | EAP | Horas planejadas | Custo antigo R$ 40/h | Custo (R$) |
| --- | --- | --- | --- | --- | --- | --- | --- | --- | --- | --- | --- | --- | --- | --- | --- |
| 65 | 1.9 | **1.6 Release R3 acelerada (v1.2.0) e encerramento** |  | 56d | 2027-03-15 | 2027-05-09 | 2027-08-16 | 2027-12-07 | 114d |  | 33,443.26 | 1.6 | 400 | 16000.00 | 33443.26 |
| 66 | 1.9.1 | 1.6.1 Gerenciamento (sprints, status, riscos) |  | 56d | 2027-03-15 | 2027-05-09 | 2027-08-16 | 2027-12-05 | 112d | Mirela Andressa de Oliveira [12.5%]; Victor Lis Bronzo [12.5%]; Ana Tayná Reis Maciel [12.5%]; Mariana Mourão Sampaio [12.5%]; Yago Barbosa Dini [12.5%] | 3,344.33 | 1.6.1 | 40 | 1600.00 | 3344.33 |
| 67 | 1.9.2 | 1.6.2 Perfil do usuário (RF-002) |  | 14d | 2027-03-22 | 2027-04-04 | 2027-08-23 | 2027-09-12 | 21d | Mirela Andressa de Oliveira [12.5%]; Victor Lis Bronzo [12.5%]; Ana Tayná Reis Maciel [12.5%]; Mariana Mourão Sampaio [12.5%]; Yago Barbosa Dini [12.5%]; Dev Pleno contratado (full-stack) [50%]; Dev Júnior contratado (front-end) [50%] | 4,180.41 | 1.6.2 | 50 | 2000.00 | 4180.41 |
| 68 | 1.9.3 | 1.6.3 Favoritos e histórico no back-end (RF-003, RNF-02) |  | 14d | 2027-03-29 | 2027-04-11 | 2027-09-06 | 2027-09-26 | 21d | Mirela Andressa de Oliveira [12.5%]; Victor Lis Bronzo [12.5%]; Ana Tayná Reis Maciel [12.5%]; Mariana Mourão Sampaio [12.5%]; Yago Barbosa Dini [12.5%]; Dev Pleno contratado (full-stack) [50%]; Dev Júnior contratado (front-end) [50%] | 4,180.41 | 1.6.3 | 50 | 2000.00 | 4180.41 |
| 69 | 1.9.4 | 1.6.4 Qualidade de software (testes automatizados) |  | 14d | 2027-04-05 | 2027-04-18 | 2027-09-20 | 2027-10-10 | 21d | Mirela Andressa de Oliveira [12.5%]; Victor Lis Bronzo [12.5%]; Ana Tayná Reis Maciel [12.5%]; Mariana Mourão Sampaio [12.5%]; Yago Barbosa Dini [12.5%]; Dev Pleno contratado (full-stack) [50%]; Dev Júnior contratado (front-end) [50%] | 5,016.49 | 1.6.4 | 60 | 2400.00 | 5016.49 |
| 70 | 1.9.5 | 1.6.5 Segurança da informação e LGPD (RNF-01) |  | 14d | 2027-04-12 | 2027-04-25 | 2027-10-11 | 2027-10-24 | 14d | Mirela Andressa de Oliveira [12.5%]; Victor Lis Bronzo [12.5%]; Ana Tayná Reis Maciel [12.5%]; Mariana Mourão Sampaio [12.5%]; Yago Barbosa Dini [12.5%]; Dev Pleno contratado (full-stack) [50%]; Dev Júnior contratado (front-end) [50%] | 4,180.41 | 1.6.5 | 50 | 2000.00 | 4180.41 |
| 71 | 1.9.6 | 1.6.6 Acessibilidade WCAG (RNF-05) |  | 7d | 2027-04-19 | 2027-04-25 | 2027-10-25 | 2027-11-07 | 14d | Mirela Andressa de Oliveira [12.5%]; Victor Lis Bronzo [12.5%]; Ana Tayná Reis Maciel [12.5%]; Mariana Mourão Sampaio [12.5%]; Yago Barbosa Dini [12.5%]; Dev Pleno contratado (full-stack) [50%]; Dev Júnior contratado (front-end) [50%] | 2,508.24 | 1.6.6 | 30 | 1200.00 | 2508.24 |
| 72 | 1.9.7 | 1.6.7 Polimento da documentação de análise |  | 14d | 2027-04-19 | 2027-05-02 | 2027-11-01 | 2027-11-14 | 14d | Mirela Andressa de Oliveira [12.5%]; Victor Lis Bronzo [12.5%]; Ana Tayná Reis Maciel [12.5%]; Mariana Mourão Sampaio [12.5%]; Yago Barbosa Dini [12.5%]; Dev Pleno contratado (full-stack) [50%]; Dev Júnior contratado (front-end) [50%] | 2,508.24 | 1.6.7 | 30 | 1200.00 | 2508.24 |
| 73 | 1.9.8 | 1.6.8 Deploy final, monitoramento e disponibilidade (RNF-03) |  | 7d | 2027-04-26 | 2027-05-02 | 2027-11-08 | 2027-11-21 | 14d | Mirela Andressa de Oliveira [12.5%]; Victor Lis Bronzo [12.5%]; Ana Tayná Reis Maciel [12.5%]; Mariana Mourão Sampaio [12.5%]; Yago Barbosa Dini [12.5%]; Dev Pleno contratado (full-stack) [50%]; Dev Júnior contratado (front-end) [50%] | 3,344.33 | 1.6.8 | 40 | 1600.00 | 3344.33 |
| 74 | 1.9.9 | 1.6.9 Homologação, aceite final e release R3 |  | 14d | 2027-04-26 | 2027-05-09 | 2027-11-22 | 2027-12-05 | 14d | Mirela Andressa de Oliveira [12.5%]; Victor Lis Bronzo [12.5%]; Ana Tayná Reis Maciel [12.5%]; Mariana Mourão Sampaio [12.5%]; Yago Barbosa Dini [12.5%]; Dev Pleno contratado (full-stack) [50%]; Dev Júnior contratado (front-end) [50%] | 4,180.41 | 1.6.9 | 50 | 2000.00 | 4180.41 |
| 75 | 1.9.10 | Release R3 (v1.2.0), aceite final e encerramento / BL-R3 | milestone | 0d | 2027-05-09 | 2027-05-09 | 2027-12-07 | 2027-12-07 | 0d |  |  |  |  |  |  |

Notes:
- 67: Linha de base: 23/08/2027 a 12/09/2027. Acelerado: 22/03/2027 a 04/04/2027.
- 68: Linha de base: 06/09/2027 a 26/09/2027. Acelerado: 29/03/2027 a 11/04/2027.
- 69: Linha de base: 20/09/2027 a 10/10/2027. Acelerado: 05/04/2027 a 18/04/2027.
- 70: Linha de base: 11/10/2027 a 24/10/2027. Acelerado: 12/04/2027 a 25/04/2027.
- 71: Linha de base: 25/10/2027 a 07/11/2027. Acelerado: 19/04/2027 a 25/04/2027.
- 72: Linha de base: 01/11/2027 a 14/11/2027. Acelerado: 19/04/2027 a 02/05/2027.
- 73: Linha de base: 08/11/2027 a 21/11/2027. Acelerado: 26/04/2027 a 02/05/2027.
- 74: Linha de base: 22/11/2027 a 05/12/2027. Acelerado: 26/04/2027 a 09/05/2027.
- 75: Linha de base 07/12/2027; acelerado 09/05/2027.
